# Turnaround Kinder Ovo - modelo condicional

How a schedule from MS Project XML changed from version to version. A marks actual dates.

## Version 1 (saved 2026-09-23)

Note of the change: Add conditional turnaround demo XML

| ID | Task | Duration | Predecessors |
| --- | --- | --- | --- |
| 1 | Parada operacional | 0.12d |  |
| 2 | LOTO e liberação | 0.25d | 1 |
| 3 | Abrir bomba P-101 | 0.25d | 2 |
| 4 | Inspecionar P-101 | 0.25d | 3 |
| 5 | Trocar rolamentos P-101 | 0.62d | 4 |
| 6 | Trocar selo mecânico P-101 | 0.38d | 4 |
| 7 | Reparar eixo P-101 | 0.88d | 4 |
| 8 | END pós-reparo do eixo | 0.25d | 7 |
| 9 | Recuperar impelidor | 0.62d | 4 |
| 10 | Substituir impelidor | 0.5d | 4 |
| 11 | Fechar e alinhar P-101 | 0.38d | 4, 5, 6, 8, 9, 10 |
| 12 | Teste funcional e partida | 0.25d | 11 |

## Version 2 (saved 2026-09-25)

Note of the change: feat(demo): add motor electrical test and replacement discovery

Added:

| ID | Task | Duration | Predecessors | Resources |
| --- | --- | --- | --- | --- |
| 13 | Ensaiar motor elétrico P-101 | 0.25d | 2 | Elétrica [200%] |
| 14 | Substituir motor P-101 | 0.75d | 13 | Elétrica [200%]; Mecânica [200%]; Guindaste |

Changed:

| ID | Task | Predecessors |
| --- | --- | --- |
| 11 | Fechar e alinhar P-101 | 4, 5, 6, 8, 9, 10 → 4, 5, 6, 8, 9, 10, 13, 14 |
